How a schedule from MS Project changed from version to version. A marks actual dates.

## Version 1 (saved 2026-08-24)

Note of the change: Finalizando merge: Agregando diagrama de Gantt de CEREBRUM

| ID | WBS | Task | Duration | Start | Finish | Predecessors | Total float | Constraint |
| --- | --- | --- | --- | --- | --- | --- | --- | --- |
| 1 | 1 | **Cerebrum** | 50.25d | 2026-04-17 | 2026-07-06 |  | 0d |  |
| 2 |  | INICIO | 0d | 2026-04-22 | 2026-04-22 |  | 48d |  |
| 3 | 1.2 | **FASE 1: Arquitectura y Diseño UI/UX** | 10d | 2026-04-17 | 2026-05-04 |  | 0.25d |  |
| 4 |  | Diagramas UML, Base de Datos y Repositorio | 10d | 2026-04-17 | 2026-05-04 |  | 0.25d | finish no earlier than 2026-05-04 |
| 5 |  | UI/UX, Diseño del Pulpo y Maquetación Base HTML/CSS | 10d | 2026-04-17 | 2026-05-04 |  | 0.25d | finish no earlier than 2026-05-04 |
| 6 | 1.3 | **FASE 2: Usuarios, Academias y Roles** | 15d | 2026-05-05 | 2026-05-26 | 3 | 0d |  |
| 7 |  | Backend Auth y Super Admin (Lógica y BD) | 15d | 2026-05-05 | 2026-05-26 |  | 0d | start no earlier than 2026-05-05 |
| 8 |  | Backend Academias y Profesores (Lógica y BD) | 15d | 2026-05-05 | 2026-05-26 |  | 0d | start no earlier than 2026-05-05 |
| 9 |  | Frontend Auth y Vistas del Super Admin | 15d | 2026-05-05 | 2026-05-26 |  | 0d | start no earlier than 2026-05-05 |
| 10 |  | Frontend Paneles de Academias y Profesores | 15d | 2026-05-05 | 2026-05-26 |  | 0d | start no earlier than 2026-05-05 |
| 11 | 1.4 | **FASE 3: Motor Académico y Contenidos** | 15d | 2026-05-27 | 2026-06-18 | 6 | 0d |  |
| 12 |  | Algoritmo de 10 Preguntas y Bloqueos Aleatorio/Premium | 15d | 2026-05-27 | 2026-06-18 |  | 0d | start no earlier than 2026-05-27 |
| 13 |  | Lógica de Contenidos Obligatorios (Videos/Textos) | 15d | 2026-05-27 | 2026-06-18 |  | 0d | start no earlier than 2026-05-27 |
| 14 |  | Interfaz interactiva de Cuestionarios y Materias | 15d | 2026-05-27 | 2026-06-18 |  | 0d | start no earlier than 2026-05-27 |
| 15 |  | Visor Multimedia de Contenidos para el Estudiante | 15d | 2026-05-27 | 2026-06-18 |  | 0d | start no earlier than 2026-05-27 |
| 16 | 1.5 | **FASE 4: QA, Pruebas y Empaquetado** | 10d | 2026-06-19 | 2026-07-03 | 11 | 0d |  |
| 17 |  | Pruebas de Integración y validación de endpoints | 10d | 2026-06-19 | 2026-07-03 |  | 0d | start no earlier than 2026-06-19 |
| 18 |  | QA General, revisión de bloqueos y corrección de Bugs | 10d | 2026-06-19 | 2026-07-03 |  | 0d | start no earlier than 2026-06-19 |
| 19 |  | Pruebas de Usabilidad e interfaces responsivas | 10d | 2026-06-19 | 2026-07-03 |  | 0d | start no earlier than 2026-06-19 |
| 20 |  | Empaquetado móvil (Capacitor) y Despliegue final | 10d | 2026-06-19 | 2026-07-03 |  | 0d | finish no earlier than 2026-07-02 |
| 21 |  | fin | 0d | 2026-07-06 | 2026-07-06 |  | 0d | start no earlier than 2026-07-06 |

## Version 2 (saved 2026-08-24)

Note of the change: Merge pull request #41 from gargasmiel/gabriel#fernandez

Last finish stays 2026-07-06.

Changed:

| ID | Task | Other |
| --- | --- | --- |
| 2 | INICIO | constraint none → start no earlier than 2026-04-22 |

## Version 3 (saved 2026-08-25)

Note of the change: gantt1000

Last finish stays 2026-07-06.

Added:

| ID | Task | Duration | Start | Finish | Constraint | Resources |
| --- | --- | --- | --- | --- | --- | --- |
| 5 | Cronograma y asignación de tareas o responsabilidades | 0d | 2026-04-22 | 2026-04-22 |  |  |
| 19 | Backend | 10d | 2026-06-19 | 2026-07-03 | start no earlier than 2026-06-19 | Iván |
| 20 | Creacion e integracion de módulos | 0d | 2026-04-22 | 2026-04-22 |  |  |
| 22 | **5. Pruebas** | 48d | 2026-04-22 | 2026-07-03 |  |  |
| 23 | Pruebas unitarias | 10d | 2026-06-19 | 2026-07-03 | start no earlier than 2026-06-19 | Kevin |
| 24 | Pruebas de integración | 10d | 2026-06-19 | 2026-07-03 | start no earlier than 2026-06-19 | Gabriel |
| 26 | Empaquetado móvil | 10d | 2026-06-17 | 2026-07-02 | finish no earlier than 2026-07-02 | Johan [97.5%] |
| 27 | Detección, reporte y corrección de errores o fallos antes de la entrega | 0d | 2026-04-22 | 2026-04-22 |  |  |
| 28 | **6. Despliegue** | 17d | 2026-06-09 | 2026-07-06 |  |  |
| 29 | Configuración y planes de servidores , host | 10d | 2026-06-19 | 2026-07-03 | start no earlier than 2026-06-19 | Kevin |
| 30 | Lanzamiento oficial de la aplicación para que esté disponible para los usuarios | 14d | 2026-06-09 | 2026-06-30 | start no earlier than 2026-06-09 | Gabriel |
| 31 | Monitoreo inicial posterior al lanzamiento y soporte básico | 10d | 2026-06-19 | 2026-07-03 | start no earlier than 2026-06-19 | Iván |

Removed: 15 Visor Multimedia de Contenidos para el Estudiante; 21 fin

Changed:

| ID | Task | Start | Finish | Duration | Total float | Predecessors | Other |
| --- | --- | --- | --- | --- | --- | --- | --- |
| 3 | **1. Planificación** |  |  |  | 0.25d → 40.25d |  | was named FASE 1: Arquitectura y Diseño UI/UX |
| 4 | Metas generales del proyecto y alcance inicial |  |  |  | 0.25d → 40.25d |  | was named Diagramas UML, Base de Datos y Repositorio |
| 6 | Identificación de los recursos necesarios |  |  |  | 0.25d → 40.25d |  | was named UI/UX, Diseño del Pulpo y Maquetación Base HTML/CSS |
| 7 | **2. Análisis** |  |  |  | 0d → 25d | 3 → none | was named FASE 2: Usuarios, Academias y Roles |
| 8 | problematica de los usuarios o del cliente. |  |  |  | 0d → 25d |  | was named Backend Auth y Super Admin (Lógica y BD) |
| 9 | Definición de requisitos funcionales |  |  |  | 0d → 25d |  | was named Backend Academias y Profesores (Lógica y BD) |
| 10 | Definición de requisitos no funcionales |  |  |  | 0d → 25d |  | was named Frontend Auth y Vistas del Super Admin |
| 11 | Elaboración de la documentación de requerimientos |  |  |  | 0d → 25d |  | was named Frontend Paneles de Academias y Profesores |
| 12 | **3. Diseño** |  |  |  | 0d → 10d | 7 → none | was named FASE 3: Motor Académico y Contenidos |
| 13 | Definición de la estructura general del software |  |  |  | 0d → 10d |  | was named Algoritmo de 10 Preguntas y Bloqueos Aleatorio/Premium |
| 14 | Modelado de bases de datos y diagramas técnicos (UML). |  |  |  | 0d → 10d |  | was named Lógica de Contenidos Obligatorios (Videos/Textos) |
| 15 | Diseño de interfaces de usuario (wireframes y prototipos) |  |  |  | 0d → 10d |  | was named Interfaz interactiva de Cuestionarios y Materias |
| 16 | **4. Implementación** | 2026-06-19 → 2026-04-22 (-58d) |  | 10d → 48d |  | 12 → none | was named FASE 4: QA, Pruebas y Empaquetado |
| 17 | Configuración del entorno de trabajo y control de versiones |  |  |  |  |  | was named Pruebas de Integración y validación de endpoints |
| 18 | Frontend |  |  |  |  |  | was named QA General, revisión de bloqueos y corrección de Bugs |
| 21 | Bases de datos | 2026-06-19 → 2026-06-17 (-2d) | 2026-07-03 → 2026-07-02 (-1d) |  | 0d → 1.25d |  | was named Empaquetado móvil (Capacitor) y Despliegue final |

## Version 4 (saved 2026-08-25)

Note of the change: Merge pull request #47 from gargasmiel/gabriel#fernandez

Last finish 2026-07-06 → 2026-10-08 (+94d).

Changed:

| ID | Task | Start | Finish | Duration | Total float | Predecessors | Other |
| --- | --- | --- | --- | --- | --- | --- | --- |
| 1 | **Cerebrum** | 2026-04-17 → 2026-06-01 (+45d) | 2026-07-06 → 2026-10-08 (+94d) | 50.25d → 91d | 0d → none |  |  |
| 2 | INICIO | 2026-04-22 → 2026-06-01 (+40d) | 2026-04-22 → 2026-06-01 (+40d) |  | 48d → 90.88d |  | constraint start no earlier than 2026-04-22 → start no earlier than 2026-06-01 |
| 3 | **1. Planificación** | 2026-04-17 → 2026-06-01 (+45d) | 2026-05-04 → 2026-06-16 (+43d) |  | 40.25d → 65.88d |  |  |
| 4 | Metas generales del proyecto y alcance inicial | 2026-04-17 → 2026-06-01 (+45d) | 2026-05-04 → 2026-06-16 (+43d) |  | 40.25d → 80.88d |  | constraint finish no earlier than 2026-05-04 → start no earlier than 2026-02-23; resources Gabriel; Kevin → Gabriel; Iván |
| 5 | Cronograma y asignación de tareas o responsabilidades | 2026-04-22 → 2026-06-01 (+40d) | 2026-04-22 → 2026-06-02 (+41d) | 0d → 2d | 48d → 88.88d |  | constraint none → start no earlier than 2026-02-23; resources none → Kevin |
| 6 | Identificación de los recursos necesarios | 2026-04-17 → 2026-06-01 (+45d) | 2026-05-04 → 2026-06-16 (+43d) |  | 40.25d → 65.88d |  | constraint finish no earlier than 2026-05-04 → start no earlier than 2026-02-23; resources Johan; Iván → Johan; Kevin |
| 7 | **2. Análisis** | 2026-05-05 → 2026-06-01 (+27d) | 2026-05-26 → 2026-07-08 (+43d) | 15d → 25d | 25d → 65.88d |  |  |
| 8 | problematica de los usuarios o del cliente. | 2026-05-05 → 2026-06-17 (+43d) | 2026-05-26 → 2026-07-08 (+43d) |  | 25d → 65.88d | none → 6 |  |
| 9 | Definición de requisitos funcionales | 2026-05-05 → 2026-06-01 (+27d) | 2026-05-26 → 2026-06-23 (+28d) |  | 25d → 75.88d |  |  |
| 10 | Definición de requisitos no funcionales | 2026-05-05 → 2026-06-01 (+27d) | 2026-05-26 → 2026-06-23 (+28d) |  | 25d → 75.88d |  |  |
| 11 | Elaboración de la documentación de requerimientos | 2026-05-05 → 2026-06-01 (+27d) | 2026-05-26 → 2026-06-23 (+28d) |  | 25d → 75.88d |  |  |
| 12 | **3. Diseño** | 2026-05-27 → 2026-06-01 (+5d) | 2026-06-18 → 2026-06-23 (+5d) |  | 10d → 75.88d |  |  |
| 13 | Definición de la estructura general del software | 2026-05-27 → 2026-06-01 (+5d) | 2026-06-18 → 2026-06-23 (+5d) |  | 10d → 75.88d |  |  |
| 14 | Modelado de bases de datos y diagramas técnicos (UML). | 2026-05-27 → 2026-06-01 (+5d) | 2026-06-18 → 2026-06-23 (+5d) |  | 10d → 75.88d |  |  |
| 15 | Diseño de interfaces de usuario (wireframes y prototipos) | 2026-05-27 → 2026-06-01 (+5d) | 2026-06-18 → 2026-06-23 (+5d) |  | 10d → 75.88d |  |  |
| 16 | **4. Implementación** | 2026-04-22 → 2026-06-01 (+40d) |  | 48d → 22d | 0d → 68.88d |  |  |
| 20 | Creacion e integracion de módulos | 2026-04-22 → 2026-06-01 (+40d) | 2026-04-22 → 2026-06-01 (+40d) |  | 48d → 90.88d |  |  |
| 22 | **5. Pruebas** | 2026-04-22 → 2026-06-01 (+40d) |  | 48d → 22d | 0d → 68.88d |  |  |
| 27 | Detección, reporte y corrección de errores o fallos antes de la entrega | 2026-04-22 → 2026-06-01 (+40d) | 2026-04-22 → 2026-06-01 (+40d) |  | 48d → 90.88d |  |  |

## Version 5 (saved 2026-09-07)

Note of the change: Gantt sincronizado y con contenido real

Last finish 2026-10-08 → 2026-11-04 (+27d). Complete tasks 0 → 15.

Added:

| ID | Task | Duration | Start | Finish | Predecessors | Constraint | Resources |
| --- | --- | --- | --- | --- | --- | --- | --- |
| 6 | Identificación de los recursos necesarios comprar equipos/licencias | 10d | 2026-06-01 A | 2026-06-16 |  | start no earlier than 2026-06-01 | Johan Fijo; Kevin (indef) [80%]; Equipos de cómputo; Servicios publicos [0.1%]; Wifi [0.1%] |
| 26 | Empaquetado móvil (android,apple) | 20d | 2026-08-27 A | 2026-09-03 A | 20 | start no earlier than 2026-08-27 | Freelance |
| 32 | Fin | 0d | 2026-11-04 | 2026-11-04 | 31 | start no earlier than 2026-07-06 |  |

Removed: 6 Identificación de los recursos necesarios; 26 Empaquetado móvil

Changed:

| ID | Task | Start | Finish | Duration | Complete | Total float | Predecessors | Other |
| --- | --- | --- | --- | --- | --- | --- | --- | --- |
| 1 | **Cerebrum** | 2026-06-01 A | 2026-10-08 → 2026-11-04 (+27d) | 91d → 110d | 0% → 76% | none → 0d |  |  |
| 2 | INICIO | 2026-06-01 A | 2026-06-01 A |  | 0% → 100% | 90.88d → none |  | constraint start no earlier than 2026-06-01 → none |
| 3 | **1. Planificación** | 2026-06-01 A |  |  | 0% → 99% | 65.88d → 100d |  |  |
| 4 | Metas generales del proyecto y alcance inicial | 2026-06-01 A | 2026-06-16 A |  | 0% → 100% | 80.88d → none |  | constraint start no earlier than 2026-02-23 → start no earlier than 2026-06-01; resources Gabriel; Iván → Gabriel (indef); Iván (Fijo) |
| 5 | Cronograma y asignación de tareas o responsabilidades | 2026-06-01 A | 2026-06-02 → 2026-06-16 A (+14d) | 2d → 10d | 0% → 100% | 88.88d → none |  | constraint start no earlier than 2026-02-23 → start no earlier than 2026-06-01; resources Kevin → Kevin (indef) [20%] |
| 7 | **2. Análisis** | 2026-06-01 → 2026-06-17 A (+16d) | 2026-07-08 A | 25d → 15d | 0% → 100% | 65.88d → none |  |  |
| 8 | problematica de los usuarios o del cliente. | 2026-06-17 A | 2026-07-08 → 2026-07-01 A (-7d) | 15d → 10d | 0% → 100% | 65.88d → none | Identificación de los recursos necesarios → 6 | resources Kevin → Kevin (indef); Johan Fijo |
| 9 | Definición de requisitos funcionales | 2026-06-01 → 2026-06-17 A (+16d) | 2026-06-23 → 2026-07-01 A (+8d) | 15d → 10d | 0% → 100% | 75.88d → none | none → 6 | resources Gabriel → Gabriel (indef) |
| 10 | Definición de requisitos no funcionales | 2026-06-01 → 2026-06-17 A (+16d) | 2026-06-23 → 2026-07-01 A (+8d) | 15d → 10d | 0% → 100% | 75.88d → none | none → 6 | resources Iván → Iván (Fijo) |
| 11 | Elaboración de la documentación de requerimientos | 2026-06-01 → 2026-07-02 A (+31d) | 2026-06-23 → 2026-07-08 A (+15d) | 15d → 5d | 0% → 100% | 75.88d → none | none → 8, 9, 10 | resources Johan → Johan Fijo; Gabriel (indef); Iván (Fijo); Kevin (indef) |
| 12 | **3. Diseño** | 2026-06-01 → 2026-07-09 A (+38d) | 2026-06-23 → 2026-07-22 A (+29d) | 15d → 10d | 0% → 100% | 75.88d → none |  |  |
| 13 | Definición de la estructura general del software | 2026-06-01 → 2026-07-09 A (+38d) | 2026-06-23 → 2026-07-15 A (+22d) | 15d → 5d | 0% → 100% | 75.88d → none | none → 11 | constraint start no earlier than 2026-05-27 → finish no earlier than 2026-06-18; resources Kevin → Kevin (indef); Gabriel (indef); Iván (Fijo); Johan Fijo |
| 14 | Modelado de bases de datos y diagramas técnicos (UML). | 2026-06-01 → 2026-07-16 A (+45d) | 2026-06-23 → 2026-07-22 A (+29d) | 15d → 5d | 0% → 100% | 75.88d → none | none → 13 | resources Gabriel → Gabriel (indef); Johan Fijo |
| 15 | Diseño de interfaces de usuario (wireframes y prototipos) | 2026-06-01 → 2026-07-16 A (+45d) | 2026-06-23 → 2026-07-22 A (+29d) | 15d → 5d | 0% → 100% | 75.88d → none | none → 13 | resources Iván → Iván (Fijo); Kevin (indef) |
| 16 | **4. Implementación** | 2026-06-01 → 2026-07-23 A (+52d) | 2026-07-03 → 2026-09-07 (+66d) | 22d → 32.5d | 0% → 86% | 68.88d → 0.25d |  |  |
| 17 | Configuración del entorno de trabajo y control de versiones | 2026-06-19 → 2026-07-23 A (+34d) | 2026-07-03 → 2026-07-29 A (+26d) | 10d → 5d | 0% → 100% | 68.88d → none | none → 14, 15 | resources Kevin → Kevin (indef); Gabriel (indef); Iván (Fijo); Johan Fijo |
| 18 | Frontend | 2026-06-19 → 2026-07-30 A (+41d) | 2026-07-03 → 2026-08-12 A (+40d) |  | 0% → 100% | 68.88d → none | none → 17 | resources Gabriel → Kevin (indef) [50%] |
| 19 | Backend | 2026-06-19 → 2026-07-30 A (+41d) | 2026-07-03 → 2026-08-12 A (+40d) |  | 0% → 100% | 68.88d → none | none → 17 | resources Iván → Johan Fijo; Kevin (indef) [50%] |
| 20 | Creacion e integracion de módulos | 2026-06-01 → 2026-08-13 A (+73d) | 2026-06-01 → 2026-09-07 (+98d) | 0d → 17.5d | 0% → 57% | 90.88d → 0.25d | none → 18, 19, 21 | resources none → Kevin (indef); Gabriel (indef); Iván (Fijo); Johan Fijo |
| 21 | Bases de datos | 2026-06-17 → 2026-07-30 A (+43d) | 2026-07-02 → 2026-08-12 A (+41d) |  | 0% → 100% | 70.12d → none | none → 17 | resources Johan [97.5%] → Iván (Fijo); Gabriel (indef) |
| 22 | **5. Pruebas** | 2026-06-01 → 2026-08-27 A (+87d) | 2026-07-03 → 2026-09-16 (+75d) | 22d → 15d | 0% → 79% | 68.88d → 0d |  |  |
| 23 | Pruebas unitarias | 2026-06-19 → 2026-08-27 A (+69d) | 2026-07-03 → 2026-09-09 (+68d) |  | 0% → 78% | 68.88d → 0d | none → 20 | resources Kevin → Kevin (indef) |
| 24 | Pruebas de integración | 2026-06-19 → 2026-08-27 A (+69d) | 2026-07-03 → 2026-09-09 (+68d) |  | 0% → 78% | 68.88d → 0d | none → 20 | resources Gabriel → Gabriel (indef) |
| 25 | Pruebas de Usabilidad e interfaces responsivas | 2026-06-19 → 2026-08-27 A (+69d) | 2026-07-03 → 2026-09-09 (+68d) |  | 0% → 78% | 68.88d → 0d | none → 20 | resources Iván → Iván (Fijo) |
| 27 | Detección, reporte y corrección de errores o fallos antes de la entrega | 2026-06-01 → 2026-09-10 (+101d) | 2026-06-01 → 2026-09-16 (+107d) | 0d → 5d |  | 90.88d → 0d | none → 23, 24, 25, 26 | resources none → Gabriel (indef); Iván (Fijo); Johan Fijo; Kevin (indef) |
| 28 | **6. Despliegue** | 2026-06-09 → 2026-09-17 (+100d) | 2026-07-06 → 2026-11-04 (+121d) | 17d → 35d |  | 68.88d → 0d |  |  |
| 29 | Configuración y planes de servidores , host | 2026-06-19 → 2026-09-17 (+90d) | 2026-07-03 → 2026-09-30 (+89d) |  |  | 68.88d → 0d | none → 27 | resources Kevin → Kevin (indef); Gabriel (indef); Licencia movil (Anual); Servidores (app nube) |
| 30 | Lanzamiento oficial de la aplicación para que esté disponible para los usuarios | 2026-06-09 → 2026-10-01 (+114d) | 2026-06-30 → 2026-10-14 (+106d) | 14d → 10d |  | 71.88d → 0d | none → 29, 26 | resources Gabriel → Gabriel (indef); Kevin (indef) |
| 31 | Monitoreo inicial posterior al lanzamiento y soporte básico | 2026-06-19 → 2026-10-15 (+118d) | 2026-07-03 → 2026-11-04 (+124d) | 10d → 15d |  | 68.88d → 0d | none → 30 | resources Iván → Gabriel (indef); Kevin (indef) |

## Version 6 (saved 2026-09-07)

Note of the change: Merge pull request #52 from gargasmiel/gabriel#fernandez

Last finish 2026-11-04 → 2026-12-22 (+48d). Complete tasks 15 → 10.

Changed:

| ID | Task | Start | Finish | Duration | Complete | Total float | Predecessors | Other |
| --- | --- | --- | --- | --- | --- | --- | --- | --- |
| 1 | **Cerebrum** |  | 2026-11-04 → 2026-12-22 (+48d) | 110d → 143.5d | 76% → 29% |  |  |  |
| 4 | Metas generales del proyecto y alcance inicial |  |  |  |  |  |  | resources Gabriel (indef); Iván (Fijo) → Desarrollador (indef); Analista (Fijo) |
| 5 | Cronograma y asignación de tareas o responsabilidades |  |  |  |  |  |  | resources Kevin (indef) [20%] → Desarrollador (indef) [20%] |
| 6 | Identificación de los recursos necesarios comprar equipos/licencias |  |  |  |  | 100d → 133.5d |  | resources Johan Fijo; Kevin (indef) [80%]; Equipos de cómputo; Servicios publicos [0.1%]; Wifi [0.1%] → Analista Fijo; Desarrollador (indef) [80%]; Equipos de cómputo; Servicios publicos [0.1%]; Wifi [0.1%] |
| 8 | problematica de los usuarios o del cliente. |  |  |  |  |  |  | resources Kevin (indef); Johan Fijo → Desarrollador (indef); Analista Fijo |
| 9 | Definición de requisitos funcionales |  |  |  |  |  |  | resources Gabriel (indef) → Desarrollador (indef) |
| 10 | Definición de requisitos no funcionales |  |  |  |  |  |  | resources Iván (Fijo) → Analista (Fijo) |
| 11 | Elaboración de la documentación de requerimientos |  |  |  |  |  |  | resources Johan Fijo; Gabriel (indef); Iván (Fijo); Kevin (indef) → Analista Fijo; Desarrollador (indef); Analista (Fijo) |
| 13 | Definición de la estructura general del software |  |  |  |  |  |  | resources Kevin (indef); Gabriel (indef); Iván (Fijo); Johan Fijo → Desarrollador (indef); Analista (Fijo); Analista Fijo |
| 14 | Modelado de bases de datos y diagramas técnicos (UML). |  |  |  |  |  |  | resources Gabriel (indef); Johan Fijo → Desarrollador (indef); Analista Fijo |
| 15 | Diseño de interfaces de usuario (wireframes y prototipos) |  |  |  |  |  |  | resources Iván (Fijo); Kevin (indef) → Analista (Fijo); Desarrollador (indef) |
| 16 | **4. Implementación** | 2026-07-23 A → 2026-07-23 | 2026-09-07 → 2026-10-13 (+36d) | 32.5d → 58.5d | 86% → 0% | 0.25d → 0d |  |  |
| 17 | Configuración del entorno de trabajo y control de versiones | 2026-07-23 A → 2026-07-23 | 2026-07-29 A → 2026-07-23 (-6d) | 5d → 1d | 100% → 0% | none → 0d |  | resources Kevin (indef); Gabriel (indef); Iván (Fijo); Johan Fijo → Desarrollador (indef); Analista (Fijo); Analista Fijo |
| 18 | Bases de datos | 2026-07-30 A → 2026-07-24 (-6d) | 2026-08-12 A → 2026-08-06 (-6d) |  | 100% → 0% | none → 97.5d | 17 → 17, 14 | constraint finish no earlier than 2026-07-02 → none; resources Iván (Fijo); Gabriel (indef) → Analista (Fijo); Desarrollador (indef) |
| 19 | Frontend | 2026-07-30 A → 2026-07-24 (-6d) | 2026-08-12 A → 2026-09-17 (+36d) | 10d → 40d | 100% → 0% | none → 0d |  | resources Kevin (indef) [50%] → Desarrollador (indef) [50%] |
| 20 | Backend | 2026-07-30 A → 2026-07-24 (-6d) | 2026-08-12 A → 2026-09-17 (+36d) | 10d → 40d | 100% → 0% | none → 0d |  | resources Johan Fijo; Kevin (indef) [50%] → Analista Fijo; Desarrollador (indef) [50%] |
| 21 | integracion de módulos | 2026-08-13 A → 2026-09-18 (+36d) | 2026-09-07 → 2026-10-13 (+36d) |  | 57% → 0% | 0.25d → 0d | 19, 20, 18 → 19, 20 | was named Creacion e integracion de módulos; resources Kevin (indef); Gabriel (indef); Iván (Fijo); Johan Fijo → Desarrollador (indef); Analista (Fijo); Analista Fijo |
| 22 | **5. Pruebas** | 2026-08-27 A → 2026-10-13 (+47d) | 2026-09-16 → 2026-11-03 (+48d) |  | 79% → 0% |  |  |  |
| 23 | Pruebas unitarias | 2026-08-27 A → 2026-10-13 (+47d) | 2026-09-09 → 2026-10-27 (+48d) |  | 78% → 0% |  |  | resources Kevin (indef) → Desarrollador (indef) |
| 24 | Pruebas de integración | 2026-08-27 A → 2026-10-13 (+47d) | 2026-09-09 → 2026-10-27 (+48d) |  | 78% → 0% |  |  | resources Gabriel (indef) → Desarrollador (indef) |
| 25 | Pruebas de Usabilidad e interfaces responsivas | 2026-08-27 A → 2026-10-13 (+47d) | 2026-09-09 → 2026-10-27 (+48d) |  | 78% → 0% |  |  | resources Iván (Fijo) → Analista (Fijo) |
| 26 | Empaquetado móvil (android,apple) | 2026-08-27 A → 2026-10-13 (+47d) | 2026-09-03 A → 2026-10-20 (+47d) |  | 100% → 0% | none → 22.25d |  |  |
| 27 | Detección, reporte y corrección de errores o fallos antes de la entrega | 2026-09-10 → 2026-10-27 (+47d) | 2026-09-16 → 2026-11-03 (+48d) |  |  |  |  | resources Gabriel (indef); Iván (Fijo); Johan Fijo; Kevin (indef) → Desarrollador (indef); Analista (Fijo); Analista Fijo |
| 28 | **6. Despliegue** | 2026-09-17 → 2026-11-03 (+47d) | 2026-11-04 → 2026-12-22 (+48d) |  |  |  |  |  |
| 29 | Configuración y planes de servidores , host | 2026-09-17 → 2026-11-03 (+47d) | 2026-09-30 → 2026-11-17 (+48d) |  |  |  |  | resources Kevin (indef); Gabriel (indef); Licencia movil (Anual); Servidores (app nube) → Desarrollador (indef); Licencia movil (Anual); Servidores (app nube) |
| 30 | Lanzamiento oficial de la aplicación para que esté disponible para los usuarios | 2026-10-01 → 2026-11-17 (+47d) | 2026-10-14 → 2026-12-01 (+48d) |  |  |  |  | resources Gabriel (indef); Kevin (indef) → Desarrollador (indef) |
| 31 | Monitoreo inicial posterior al lanzamiento y soporte básico | 2026-10-15 → 2026-12-01 (+47d) | 2026-11-04 → 2026-12-22 (+48d) |  |  |  |  | resources Gabriel (indef); Kevin (indef) → Desarrollador (indef) |
| 32 | Fin | 2026-11-04 → 2026-12-22 (+48d) | 2026-11-04 → 2026-12-22 (+48d) |  |  |  |  |  |

## Version 7 (saved 2026-09-18)

Note of the change: update granpa

Last finish stays 2026-12-22. Complete tasks 10 → 9.

Removed: 1 Cerebrum; 2 INICIO; 32 Fin
